# Artificial consciousness project

Schedule from GanttProject, 2015-06-01 to 2017-06-01.
IU

## Calendars

- Project calendar: Mon-Fri working; Sat-Sun off.

## Schedule

| ID | WBS | Task | Duration | Start | Finish | Predecessors |
| --- | --- | --- | --- | --- | --- | --- |
| 1 | 1 | Team forming | 20d | 2015-06-01 | 2015-06-26 |  |
| 2 | 2 | **Theoretical model of consciousness** | 500d | 2015-06-29 | 2017-05-26 | 1 |
| 3 | 2.1 | Scientific sources review | 60d | 2015-06-29 | 2015-09-18 |  |
| 4 | 2.2 | Analysis | 40d | 2015-09-21 | 2015-11-13 | 3 |
| 5 | 2.3 | Model development | 40d | 2015-11-16 | 2016-01-08 | 4 |
| 6 | 2.4 | Prototype version 1 | 60d | 2016-01-11 | 2016-04-01 | 5 |
| 7 | 2.5 | Testing and experimenting | 20d | 2016-04-04 | 2016-04-29 | 6 |
| 8 | 2.6 | Analysis of results | 20d | 2016-05-02 | 2016-05-27 | 7 |
| 9 | 2.7 | Model update | 30d | 2016-05-30 | 2016-07-08 | 8 |
| 10 | 2.8 | Prototype version 2 | 60d | 2016-07-11 | 2016-09-30 | 9 |
| 11 | 2.9 | Testing and experiments | 30d | 2016-10-03 | 2016-11-11 | 10 |
| 12 | 2.10 | Analysis of results | 20d | 2016-11-14 | 2016-12-09 | 11 |
| 13 | 2.11 | Model update | 30d | 2016-12-12 | 2017-01-20 | 12 |
| 14 | 2.12 | Prototype version 3 | 60d | 2017-01-23 | 2017-04-14 | 13 |
| 15 | 2.13 | Testing and experiments | 20d | 2017-04-17 | 2017-05-12 | 14 |
| 16 | 2.14 | Analysis of results | 10d | 2017-05-15 | 2017-05-26 | 15 |
| 17 | 3 | **NEUCOGAR** | 350d | 2015-06-29 | 2016-10-28 | 1 |
| 18 | 3.1 | Neuromodulation Architecture specification | 1d | 2015-06-29 | 2015-06-29 |  |
| 19 | 3.2 | **Dopamine** | 110d | 2015-06-29 | 2015-11-27 |  |
| 20 | 3.2.1 | Basal ganglia simple model implementation | 20d | 2015-06-29 | 2015-07-24 |  |
| 21 | 3.2.2 | Basal ganglia with extended feedback loops | 30d | 2015-07-27 | 2015-09-04 | 20 |
| 22 | 3.2.3 | Basal ganglia with feedback loops and realistic number of neurons | 60d | 2015-09-07 | 2015-11-27 | 21 |
| 23 | 3.3 | **Serotonin** | 110d | 2015-11-30 | 2016-04-29 | 19 |
| 24 | 3.3.1 | Serotonin neuron/synapse | 30d | 2015-11-30 | 2016-01-08 |  |
| 25 | 3.3.2 | Serotonin pathway reduced number of neurons | 20d | 2016-01-11 | 2016-02-05 | 24 |
| 26 | 3.3.3 | Serotonin pathway relistic scale | 60d | 2016-02-08 | 2016-04-29 | 25 |

| ID | WBS | Task | Duration | Start | Finish | Predecessors |
| --- | --- | --- | --- | --- | --- | --- |
| 27 | 3.4 | **Noradrenaline** | 130d | 2016-05-02 | 2016-10-28 | 23 |
| 28 | 3.4.1 | Noradrenaline neuron/synapse model | 20d | 2016-05-02 | 2016-05-27 |  |
| 29 | 3.4.2 | Noradrenaline neuron/synapse | 30d | 2016-05-30 | 2016-07-08 | 28 |
| 30 | 3.4.3 | Noradrenaline projections reduced number of neurons | 20d | 2016-07-11 | 2016-08-05 | 29 |
| 31 | 3.4.4 | Noradrenaline projections realistic scales | 60d | 2016-08-08 | 2016-10-28 | 30 |
| 32 | 4 | Instinctive reactions | 60d | 2016-10-31 | 2017-01-20 | 27 |
| 33 | 5 | Learned reactions | 94d | 2017-01-23 | 2017-06-01 | 32 |
| 34 | 6 | Deliberative thinking | 94d | 2017-01-23 | 2017-06-01 | 32 |
| 35 | 7 | **Cortical column topology** | 180d | 2015-06-29 | 2016-03-04 | 1 |
| 36 | 7.1 | Filetering | 30d | 2015-06-29 | 2015-08-07 |  |
| 37 | 7.2 | Clastering | 60d | 2015-08-10 | 2015-10-30 | 36 |
| 38 | 7.3 | Spikes casuality | 90d | 2015-11-02 | 2016-03-04 | 37 |
| 39 | 8 | Publications | 364d | 2016-01-11 | 2017-06-01 | 1, 5 |
